# Delivery-Launch-Plan.xml

Schedule from MS Project XML, 2026-09-20 to 2027-02-02.

## Calendars

- Standard: Mon-Thu 08:00-12:00, 13:00-17:00; Fri-Sat off; Sun 08:00-12:00, 13:00-17:00.

## Schedule

| ID | WBS | Task | Type | Duration | Start | Finish | Predecessors | Total slack | Free slack |
| --- | --- | --- | --- | --- | --- | --- | --- | --- | --- |
| 1 | 1 | **Phase 0: Foundation & Company Setup** |  | 7d | 2026-09-20 | 2026-09-28 |  | 91d |  |
| 2 | 1.1 | Finalize legal entity & commercial registration |  | 7d | 2026-09-20 | 2026-09-28 |  | 91d |  |
| 3 | 1.2 | Open corporate bank account |  | 3d | 2026-09-20 | 2026-09-22 |  | 95d |  |
| 4 | 1.3 | Engage accountant & legal advisor |  | 1d | 2026-09-20 | 2026-09-20 |  | 97d |  |
| 5 | 1.4 | Shortlist & evaluate white-label platform vendors |  | 3d | 2026-09-20 | 2026-09-22 |  | 95d |  |
| 6 | 2 | **Phase 1: SyTRA Track A Submission (Delivery License)** |  | 73d | 2026-09-20 | 2026-12-29 |  | 0d |  |
| 7 | 2.1 | Finalize feasibility study, tariff & data-protection docs with company details |  | 5d | 2026-09-20 | 2026-09-24 |  | 0d |  |
| 8 | 2.2 | Gather signatory docs, ID copies, criminal record clearances |  | 5d | 2026-09-20 | 2026-09-24 |  | 0d |  |
| 9 | 2.3 | Complete SyTRA license application form |  | 1d | 2026-09-27 | 2026-09-27 | 7, 8 | 0d |  |
| 10 | 2.4 | Pay application review fee |  | 1d | 2026-09-28 | 2026-09-28 | 9 | 0d |  |
| 11 | 2.5 | MILESTONE: Submit Track A application to SyTRA | milestone | 0d | 2026-09-28 | 2026-09-28 | 10 | 0d |  |
| 12 | 2.6 | SyTRA acknowledgment period (up to 15 business days) |  | 15d | 2026-09-29 | 2026-10-19 | 11 | 0d |  |
| 13 | 2.7 | SyTRA review & decision period (up to 45 business days) |  | 45d | 2026-10-20 | 2026-12-21 | 12 | 0d |  |
| 14 | 2.8 | MILESTONE: SyTRA preliminary approval received | milestone | 0d | 2026-12-21 | 2026-12-21 | 13 | 0d |  |
| 15 | 2.9 | Complete final requirements & pay initial license fee |  | 6d | 2026-12-22 | 2026-12-29 | 14 | 25d | 0d |
| 16 | 2.10 | MILESTONE: SyTRA License Granted | milestone | 0d | 2026-12-29 | 2026-12-29 | 15 | 25d |  |
| 17 | 3 | **Phase 2: White-Label Platform Setup** |  | 41d | 2026-09-20 | 2026-11-15 |  | 32d |  |
| 18 | 3.1 | Brand configuration (logo, colors, app name) |  | 7d | 2026-09-20 | 2026-09-28 |  | 32d | 0d |
| 19 | 3.2 | Set up local hosting within Syria (SyTRA requirement) |  | 3d | 2026-09-20 | 2026-09-22 |  | 37d | 5d |
| 20 | 3.3 | Purchase Domain |  | 1d | 2026-09-29 | 2026-09-29 | 18 | 32d | 0d |
| 21 | 3.4 | Platform Installation |  | 3d | 2026-09-30 | 2026-10-04 | 18, 19, 20 | 32d | 0d |
| 22 | 3.5 | Configure commission & delivery-fee rules |  | 2d | 2026-10-05 | 2026-10-06 | 21 | 60d | 28d |
| 23 | 3.6 | Integrate payment gateway |  | 7d | 2026-10-05 | 2026-10-13 | 21 | 55d | 23d |
| 24 | 3.7 | Configure SMS verification & security settings |  | 2d | 2026-10-05 | 2026-10-06 | 21 | 60d | 28d |
| 25 | 3.8 | Internal QA testing of full app flow |  | 30d | 2026-10-05 | 2026-11-15 | 21 | 32d | 0d |
| 26 | 3.9 | Google Play Store & Apple App Store |  | 21d | 2026-10-05 | 2026-11-02 | 25SS | 41d | 9d |
| 27 | 3.10 | MILESTONE: Platform Ready for Testing | milestone | 0d | 2026-11-15 | 2026-11-15 | 22, 23, 24, 25, 26 | 32d | 0d |

| ID | WBS | Task | Type | Duration | Start | Finish | Predecessors | Total slack | Free slack |
| --- | --- | --- | --- | --- | --- | --- | --- | --- | --- |
| 28 | 4 | **Phase 3: Hiring & Operations Setup** |  | 81d | 2026-09-20 | 2027-01-10 |  | 3d |  |
| 29 | 4.1 | Lease office space |  | 14d | 2026-09-20 | 2026-10-07 |  | 53d | 43d |
| 30 | 4.2 | Lease bike storage/warehouse space |  | 14d | 2026-09-20 | 2026-10-07 |  | 53d | 43d |
| 31 | 4.3 | Procure office equipment |  | 7d | 2026-12-22 | 2026-12-30 | 29FS+10d, 14 | 10d | 7d |
| 32 | 4.4 | Procure bike-storage equipment |  | 7d | 2026-12-22 | 2026-12-30 | 30FS+10d, 14 | 10d | 7d |
| 33 | 4.5 | Procure bikes (40 units) |  | 14d | 2026-12-22 | 2027-01-10 | 14 | 3d | 0d |
| 34 | 4.6 | Procure mobile phones & POS devices |  | 14d | 2026-12-22 | 2027-01-10 | 14 | 3d | 0d |
| 35 | 4.7 | Hire Store Mechanics |  | 3d | 2026-12-22 | 2026-12-24 | 14 | 14d | 11d |
| 36 | 4.8 | Hire Support staff (2) |  | 5d | 2026-12-22 | 2026-12-28 | 14 | 12d | 9d |
| 37 | 4.9 | Hire Marketing staff (2) |  | 5d | 2026-12-22 | 2026-12-28 | 14 | 12d | 9d |
| 38 | 4.10 | Hire Accountant (2) |  | 5d | 2026-12-22 | 2026-12-28 | 14 | 12d | 9d |
| 39 | 4.11 | Recruit riders (target 40) |  | 7d | 2026-12-22 | 2026-12-30 | 14 | 7d | 0d |
| 40 | 4.12 | Rider onboarding: safety procedures & app training |  | 3d | 2026-12-31 | 2027-01-04 | 39 | 7d | 4d |
| 41 | 4.13 | MILESTONE: Operations Team & Fleet Ready | milestone | 0d | 2027-01-10 | 2027-01-10 | 29, 30, 31, 32, 33, 34, 35, 36, 37, 38, 39, 40 | 3d | 0d |
| 42 | 5 | **Phase 4: Compliance Finalization (App Accreditation)** |  | 25d | 2026-11-16 | 2026-12-20 |  | 32d |  |
| 43 | 5.1 | Prepare Track B (App Accreditation) documents |  | 7d | 2026-11-16 | 2026-11-24 | 27 | 32d | 0d |
| 44 | 5.2 | Conduct security penetration test on configured app |  | 7d | 2026-11-16 | 2026-11-24 | 27 | 32d | 0d |
| 45 | 5.3 | Obtain pentest certificate from accredited security firm |  | 7d | 2026-11-16 | 2026-11-24 | 27 | 32d | 0d |
| 46 | 5.4 | Finalize bilingual privacy policy & terms of use |  | 3d | 2026-11-16 | 2026-11-18 | 27 | 36d | 4d |
| 47 | 5.5 | Sign required regulatory pledges (SSL, info-security policy) |  | 3d | 2026-11-16 | 2026-11-18 | 27 | 36d | 4d |
| 48 | 5.6 | MILESTONE: Submit Track B application | milestone | 0d | 2026-11-24 | 2026-11-24 | 43, 44, 45, 46, 47 | 32d | 0d |
| 49 | 5.7 | Track B accreditation review period |  | 18d | 2026-11-25 | 2026-12-20 | 48 | 32d | 0d |
| 50 | 5.8 | MILESTONE: App Accreditation Granted | milestone | 0d | 2026-12-20 | 2026-12-20 | 49 | 32d |  |
| 51 | 6 | **Phase 5: SyTRA Decision & Pre-Launch** |  | 28d | 2026-12-22 | 2027-01-28 |  | 0d |  |
| 52 | 6.1 | Notify SyTRA of intended commercial launch date |  | 1d | 2026-12-22 | 2026-12-22 | 14 | 0d |  |
| 53 | 6.2 | Soft launch / pilot testing with limited riders |  | 7d | 2027-01-11 | 2027-01-19 | 27, 41 | 3d | 0d |
| 54 | 6.3 | Address pilot feedback & fixes |  | 7d | 2027-01-20 | 2027-01-28 | 53 | 3d |  |
| 55 | 6.4 | Marketing campaign launch prep |  | 14d | 2027-01-05 | 2027-01-24 | 57SS-21d | 7d |  |

| ID | WBS | Task | Type | Duration | Start | Finish | Predecessors | Total slack |
| --- | --- | --- | --- | --- | --- | --- | --- | --- |
| 56 | 7 | **Phase 6: Commercial Launch** |  | 0d | 2027-02-02 | 2027-02-02 |  | 0d |
| 57 | 7.1 | MILESTONE: Commercial Launch (Aleppo) | milestone | 0d | 2027-02-02 | 2027-02-02 | 52FS+3d, 1, 6, 17, 28, 42, 54 | 0d |
